# 智能箱项目V1.0开发

Schedule from MS Project, 2019-04-22 to 2019-06-10, status date 2019-04-18.
Microsoft

## Calendars

- 六天: Mon-Sat 08:00-12:00, 13:00-17:00; Sun off. Exceptions (off unless hours are given): 2019-05-01 to 2019-05-04 (w五一).

## Resources

| Resource |
| --- |
| 刘明伟 |
| 侯海军 |
| 李勇 |

## Schedule

| ID | WBS | Task | Duration | Start | Finish | Predecessors | Total slack | Free slack | Resources | Work |
| --- | --- | --- | --- | --- | --- | --- | --- | --- | --- | --- |
| 1 | 1 | **智能箱设备开发** | 31d | 2019-04-22 | 2019-06-01 |  | 0d |  | 刘明伟 | 248h |
| 2 | 1.1 | **硬件开发** | 10d | 2019-04-22 | 2019-05-08 |  | 3d |  |  |  |
| 3 | 1.1.1 | 硬件选型 | 2d | 2019-04-22 | 2019-04-24 |  | 3d | 0d |  |  |
| 4 | 1.1.2 | 硬件采购及到货 | 6d | 2019-04-24 | 2019-05-06 | 3 | 3d | 0d |  |  |
| 5 | 1.1.3 | 硬件开发环境搭建 | 2d | 2019-05-06 | 2019-05-08 | 4 | 21d |  |  |  |
| 6 | 1.2 | **嵌入式软件开发** | 31d | 2019-04-22 | 2019-06-01 |  | 0d |  |  |  |
| 7 | 1.2.1 | 开发环境搭建 | 2d | 2019-04-22 | 2019-04-24 |  | 0d |  |  |  |
| 8 | 1.2.2 | 框架设计编写 | 3d | 2019-04-24 | 2019-04-27 | 7 | 0d |  |  |  |
| 9 | 1.2.3 | **后台通信协议** | 6d | 2019-04-27 | 2019-05-09 | 8 | 0d |  |  |  |
| 10 | 1.2.3.1 | 通信协议设计 | 2d | 2019-04-27 | 2019-04-30 |  | 0d |  |  |  |
| 11 | 1.2.3.2 | 通信协议开发 | 4d | 2019-04-30 | 2019-05-09 | 10 | 0d |  |  |  |
| 12 | 1.2.4 | **交流电源模块功能开发** | 7d | 2019-05-09 | 2019-05-17 | 9 | 0d |  |  |  |
| 13 | 1.2.4.1 | 模块功能接口开发 | 3d | 2019-05-09 | 2019-05-13 |  | 0d |  |  |  |
| 14 | 1.2.4.2 | mosbus通信协议开发 | 2d | 2019-05-13 | 2019-05-15 | 13 | 0d |  |  |  |
| 15 | 1.2.4.3 | 自动重合闸采集控制 | 2d | 2019-05-15 | 2019-05-17 | 14 | 0d |  |  |  |
| 16 | 1.2.5 | **直流电源模块功能开发** | 5d | 2019-05-17 | 2019-05-23 | 12 | 0d |  |  |  |
| 17 | 1.2.5.1 | 模块功能接口开发 | 3d | 2019-05-17 | 2019-05-21 |  | 0d |  |  |  |
| 18 | 1.2.5.2 | 直流开关IO控制 | 2d | 2019-05-21 | 2019-05-23 | 17 | 0d |  |  |  |
| 19 | 1.2.6 | **继电器开关模块功能开发** | 3d | 2019-05-23 | 2019-05-27 | 16 | 0d |  |  |  |
| 20 | 1.2.6.1 | 继电器协议调试对接 | 3d | 2019-05-23 | 2019-05-27 |  | 0d |  |  |  |
| 21 | 1.2.7 | **基本状态检测模块功能开发** | 4d | 2019-05-27 | 2019-05-31 |  | 1d |  |  |  |
| 22 | 1.2.7.1 | 温湿度检测模块 | 3d | 2019-05-27 | 2019-05-30 | 19 | 1d | 0d |  |  |
| 23 | 1.2.7.2 | 运行状态指示灯 | 1d | 2019-05-30 | 2019-05-31 | 22 | 1d |  |  |  |
| 24 | 1.2.8 | **防护功能开发** | 5d | 2019-05-27 | 2019-06-01 | 19 | 0d |  |  |  |
| 25 | 1.2.8.1 | 开箱检测报警 | 2d | 2019-05-27 | 2019-05-29 |  | 0d |  |  |  |
| 26 | 1.2.8.2 | 摄像头抓拍录像 | 3d | 2019-05-29 | 2019-06-01 | 25 | 0d |  |  |  |
| 27 | 1.2.8.3 | 风扇控制模块功能开发 | 1d | 2019-05-30 | 2019-05-31 | 22 | 1d |  |  |  |

| ID | WBS | Task | Duration | Start | Finish | Predecessors | Total slack | Free slack | Resources | Work |
| --- | --- | --- | --- | --- | --- | --- | --- | --- | --- | --- |
| 28 | 1.3 | **结构开发** | 20d | 2019-05-06 | 2019-05-29 |  | 3d |  |  |  |
| 29 | 1.3.1 | 智能箱箱体结构设计 | 10d | 2019-05-06 | 2019-05-17 | 4 | 3d | 0d |  |  |
| 30 | 1.3.2 | 智能箱箱体加工制作 | 10d | 2019-05-17 | 2019-05-29 | 29 | 3d |  |  |  |
| 31 | 2 | **智能箱后台开发** | 29d | 2019-04-22 | 2019-05-30 |  | 2d |  |  | 392h |
| 32 | 2.1 | 数据库设计 | 3d | 2019-04-22 | 2019-04-25 |  | 2d | 0d | 侯海军 | 24h |
| 33 | 2.2 | 平台搭建 | 3d | 2019-04-22 | 2019-04-25 |  | 2d | 0d | 李勇 | 24h |
| 34 | 2.3 | **系统管理** | 5d | 2019-04-25 | 2019-05-06 |  | 2d | 0d |  | 80h |
| 35 | 2.3.1 | 用户管理 | 2d | 2019-04-25 | 2019-04-27 | 33, 32 | 2d | 0d | 侯海军 | 16h |
| 36 | 2.3.2 | 菜单管理 | 3d | 2019-04-27 | 2019-05-06 | 35 | 2d |  | 侯海军 | 24h |
| 37 | 2.3.3 | 角色管理 | 3d | 2019-04-25 | 2019-04-29 | 33, 32 | 2d | 0d | 李勇 | 24h |
| 38 | 2.3.4 | 字典管理 | 2d | 2019-04-29 | 2019-05-06 | 37 | 2d |  | 李勇 | 16h |
| 39 | 2.4 | **设备管理** | 9d | 2019-05-06 | 2019-05-16 |  | 2d | 0d |  | 72h |
| 40 | 2.4.1 | 智能箱管理 | 3d | 2019-05-06 | 2019-05-09 | 34 | 2d | 0d | 侯海军 | 24h |
| 41 | 2.4.2 | 通讯协议解析对接 | 3d | 2019-05-09 | 2019-05-13 | 40 | 2d | 0d | 李勇 | 24h |
| 42 | 2.4.3 | 外接设备管理 | 3d | 2019-05-13 | 2019-05-16 | 41 | 5d |  | 侯海军 | 24h |
| 43 | 2.5 | **监测管理** | 12d | 2019-05-13 | 2019-05-27 |  | 2d |  |  | 144h |
| 44 | 2.5.1 | 智能箱状态监测及查询 | 3d | 2019-05-16 | 2019-05-20 | 39 | 5d | 0d | 侯海军 | 24h |
| 45 | 2.5.2 | 智能箱状态详情及控制 | 6d | 2019-05-13 | 2019-05-20 | 41 | 2d | 0d | 李勇 | 48h |
| 46 | 2.5.3 | 历史信息 | 3d | 2019-05-20 | 2019-05-23 | 44 | 5d | 0d | 侯海军 | 24h |
| 47 | 2.5.4 | 开箱抓拍信息展示 | 3d | 2019-05-20 | 2019-05-23 | 45 | 2d | 0d | 李勇 | 24h |
| 48 | 2.5.5 | 展示外接设备详情 | 3d | 2019-05-23 | 2019-05-27 | 46 | 5d |  | 侯海军 | 24h |
| 49 | 2.6 | **报警管理** | 6d | 2019-05-23 | 2019-05-30 |  | 2d |  |  | 48h |
| 50 | 2.6.1 | 设备报警信息列表展示及查询 | 3d | 2019-05-23 | 2019-05-27 | 47 | 2d | 0d | 李勇 | 24h |
| 51 | 2.6.2 | 报警信息详情展示及处理 | 3d | 2019-05-27 | 2019-05-30 | 50 | 2d |  | 李勇 | 24h |

| ID | WBS | Task | Type | Duration | Start | Finish | Predecessors | Total slack | Free slack | Resources | Work |
| --- | --- | --- | --- | --- | --- | --- | --- | --- | --- | --- | --- |
| 52 | 3 | **V1.0联调测试** |  | 7d | 2019-06-01 | 2019-06-10 |  | 0d |  |  | 168h |
| 53 | 3.1 | 联调测试 |  | 7d | 2019-06-01 | 2019-06-10 | 1, 31 | 0d |  | 侯海军; 李勇; 刘明伟 | 168h |
| 54 | 4 | **智能箱V2.0开发（待定义）** | inactive | 7d | 2019-04-22 | 2019-04-30 |  | 31d |  |  |  |
| 55 | 4.1 | **我的工作台** | inactive | 6d | 2019-04-22 | 2019-04-29 |  | 31d | 0d |  |  |
| 56 | 4.1.1 | 各种类型点位数量统计 | inactive | 3d | 2019-04-22 | 2019-04-25 |  | 31d | 0d |  |  |
| 57 | 4.1.2 | 图表形式展示告警信息 | inactive | 3d | 2019-04-25 | 2019-04-29 | 56 | 31d |  |  |  |
| 58 | 4.2 | 统计分析 | inactive | 1d | 2019-04-29 | 2019-04-30 | 55 | 31d |  |  |  |
